# VibreTribe

Schedule from ProjectLibre, 2026-02-27 to 2026-06-24.

## Calendars

- Estandar: Mon-Fri 08:00-12:00, 13:00-17:00; Sat-Sun off.

## Resources

| Resource | Group |
| --- | --- |
| No Asignado |  |
| Camilo Andres Arias Tenjo | VibeTribeGroup |
| Katlyn Galvis Rodriguez | VibeTribeGroup |
| Diego Fernando Aguirre Tenjo | VibeTribeGroup |
| Juan Jose Albornoz Velazco | VibeTribeGroup |

## Schedule

| ID | WBS | Task | Duration | Start | Finish | Predecessors | Constraint | Resources |
| --- | --- | --- | --- | --- | --- | --- | --- | --- |
| 1 | 1 | **VibeTribe** | 83.5d | 2026-02-27 | 2026-06-24 |  |  |  |
| 2 | 1.1 | **Gestion y diseño** | 6d | 2026-02-27 | 2026-03-09 |  |  |  |
| 3 | 1.1.1 | Diseño UX/UI Prototipos (Figma) | 4d | 2026-02-27 | 2026-03-05 |  |  | Diego Fernando Aguirre Tenjo |
| 4 | 1.1.2 | Configuración AWS y Repositorios | 3d | 2026-02-27 | 2026-03-04 |  |  | Camilo Andres Arias Tenjo |
| 5 | 1.1.3 | Definición de Criterios de Aceptación | 2d | 2026-03-05 | 2026-03-09 | 3 |  | Juan Jose Albornoz Velazco |
| 6 | 1.1.4 | Configuración CI/CD (GitHub Actions) | 3d | 2026-03-04 | 2026-03-09 | 4 |  | Katlyn Galvis Rodriguez |
| 7 | 1.2 | HITO: Entorno de Desarrollo Listo | 0d | 2026-03-09 | 2026-03-09 | 5, 6 |  |  |
| 8 | 1.3 | **Ejecución de Sprints** | 51.5d | 2026-03-09 | 2026-05-19 | 2 |  |  |
| 9 | 1.3.1 | **Sprint 1: Autenticación (Sem 5-7)** | 14d | 2026-03-09 | 2026-03-27 |  |  |  |
| 10 | 1.3.1.1 | Desarrollo HU-01 (Registro) | 6d | 2026-03-09 | 2026-03-17 |  |  | Camilo Andres Arias Tenjo |
| 11 | 1.3.1.2 | Desarrollo HU-04 (Recuperar Contraseña) | 5d | 2026-03-09 | 2026-03-16 |  |  | Juan Jose Albornoz Velazco |
| 12 | 1.3.1.3 | Desarrollo HU-02 (Gestión Perfil) | 4d | 2026-03-17 | 2026-03-23 | 10 |  | Camilo Andres Arias Tenjo |
| 13 | 1.3.1.4 | Desarrollo HU-20 (Login Google) | 5d | 2026-03-17 | 2026-03-24 | 10 |  | Juan Jose Albornoz Velazco |
| 14 | 1.3.1.5 | Pruebas Unitarias Sprint 1 | 3d | 2026-03-24 | 2026-03-27 | 12, 13 |  | Diego Fernando Aguirre Tenjo |
| 15 | 1.3.2 | **Sprint 2: Paquetes de Viaje (Sem 8-10)** | 14d | 2026-04-06 | 2026-04-24 | 9 | start no earlier than 2026-04-06 |  |
| 16 | 1.3.2.1 | Desarrollo HU-06 (Crear Paquete) | 5d | 2026-04-06 | 2026-04-13 | 14 |  | Camilo Andres Arias Tenjo; Juan Jose Albornoz Velazco |
| 17 | 1.3.2.2 | Desarrollo HU-07 (Búsqueda) | 4d | 2026-04-13 | 2026-04-17 | 16 |  | Camilo Andres Arias Tenjo |
| 18 | 1.3.2.3 | Desarrollo HU-21 (Detalle Paquete) | 2d | 2026-04-17 | 2026-04-21 | 17 |  | Camilo Andres Arias Tenjo |
| 19 | 1.3.2.4 | Pruebas Unitarias Sprint 2 | 3d | 2026-04-21 | 2026-04-24 | 18 |  | Diego Fernando Aguirre Tenjo |
| 20 | 1.3.3 | **Sprint 3: Comunidad e Inscripción (Sem 11-13)** | 7.5d | 2026-04-24 | 2026-05-05 | 15 |  |  |
| 21 | 1.3.3.1 | Desarrollo HU-11 (Inscripción) | 2.5d | 2026-04-24 | 2026-04-28 | 19 |  | Camilo Andres Arias Tenjo; Juan Jose Albornoz Velazco |
| 22 | 1.3.3.2 | Desarrollo HU-12 (Cancelación) | 3d | 2026-04-28 | 2026-05-01 | 21 |  | Juan Jose Albornoz Velazco |
| 23 | 1.3.3.3 | Pruebas Unitarias Sprint 3 | 2d | 2026-05-01 | 2026-05-05 | 22 |  | Diego Fernando Aguirre Tenjo |
| 24 | 1.3.4 | **Sprint 4: Moderación y Feedback (Sem 14-16)** | 10d | 2026-05-05 | 2026-05-19 | 20 |  |  |
| 25 | 1.3.4.1 | Desarrollo HU-13 (Calificación) | 4d | 2026-05-05 | 2026-05-11 | 23 |  | Camilo Andres Arias Tenjo |
| 26 | 1.3.4.2 | Desarrollo HU-16 (Reportar) | 4d | 2026-05-11 | 2026-05-15 | 25 |  | Juan Jose Albornoz Velazco |
| 27 | 1.3.4.3 | Pruebas Unitarias Sprint 4 | 2d | 2026-05-15 | 2026-05-19 | 26 |  | Diego Fernando Aguirre Tenjo |
| 28 | 1.4 | HITO: Sprints Listos | 0d | 2026-05-19 | 2026-05-19 | 9, 15, 20, 24 |  |  |

| ID | WBS | Task | Duration | Start | Finish | Predecessors | Resources |
| --- | --- | --- | --- | --- | --- | --- | --- |
| 29 | 1.5 | **Cierre y Lanzamiento** | 26d | 2026-05-19 | 2026-06-24 | 8 |  |
| 30 | 1.5.1 | Pruebas de Integración y Estrés | 10d | 2026-05-19 | 2026-06-02 | 27 | Diego Fernando Aguirre Tenjo |
| 31 | 1.5.2 | Corrección de Errores (Bugs) | 4d | 2026-06-02 | 2026-06-08 | 30 | Camilo Andres Arias Tenjo; Juan Jose Albornoz Velazco |
| 32 | 1.5.3 | Despliegue en AWS (Producción) | 2d | 2026-06-08 | 2026-06-10 | 31 | Juan Jose Albornoz Velazco |
| 33 | 1.5.4 | Capacitación y Manuales | 5d | 2026-06-10 | 2026-06-17 | 32 | Katlyn Galvis Rodriguez |
| 34 | 1.5.5 | Cierre Administrativo | 5d | 2026-06-17 | 2026-06-24 | 33 | Katlyn Galvis Rodriguez |
| 35 | 1.6 | HITO: Fin del Proyecto | 0d | 2026-06-24 | 2026-06-24 | 29 |  |
